# ctools

Schedule from MS Project, 2019-04-08 to 2020-05-01.

## Calendars

- Standard: Mon-Fri 08:00-12:00, 13:00-17:00; Sat-Sun off.

## Resources

| Resource |
| --- |
| Morpeheus |
| Morpheus |

## Schedule

| ID | WBS | Task | Duration | Start | Finish | Predecessors | Total slack | Free slack | Resources | Work |
| --- | --- | --- | --- | --- | --- | --- | --- | --- | --- | --- |
| 1 | 1 | Убрать исходный код Mgen из открытого доступа | 1d? | 2019-04-08 | 2019-04-08 |  | 279d |  |  |  |
| 2 | 2 | Тестирование и устранение недостатков в текущем функционале сайта Composer Tools и алгоритмов озвучивания | 40d | 2019-04-08 | 2019-05-31 |  | 240d |  |  |  |
| 3 | 3 | Купить и настроить второй сервер | 10d | 2019-04-08 | 2019-04-19 |  | 270d |  |  |  |
| 4 | 4 | Разработка и внедрение SLA | 10d | 2019-04-08 | 2019-04-19 |  | 270d |  |  |  |
| 5 | 5 | Тестирование и устранение недостатков в текущем функционале анализа контрапункта | 60d | 2019-04-08 | 2019-06-28 |  | 220d |  |  |  |
| 6 | 6 | Формирование дерева возможных партнеров и каналов сбыта | 20d | 2019-04-08 | 2019-05-03 |  | 260d |  | Morpheus | 160h |
| 7 | 7 | **Анализ гармонии** | 280d | 2019-04-08 | 2020-05-01 |  | 0d |  |  |  |
| 8 | 7.1 | Разработка | 200d | 2019-04-08 | 2020-01-10 |  | 0d |  |  |  |
| 9 | 7.2 | Тестирование | 80d | 2020-01-13 | 2020-05-01 | 8 | 0d |  |  |  |
| 10 | 8 | **Генерация многоголосного контрапункта** | 160d | 2019-04-08 | 2019-11-15 |  | 100d |  |  |  |
| 11 | 8.1 | Разработка | 100d | 2019-04-08 | 2019-08-23 |  | 100d | 0d |  |  |
| 12 | 8.2 | Тестирование | 60d | 2019-08-26 | 2019-11-15 | 11 | 120d |  |  |  |
| 13 | 9 | **Коррекция многоголосного контрапункта** | 80d | 2019-08-26 | 2019-12-13 |  | 100d |  |  |  |
| 14 | 9.1 | Разработка | 40d | 2019-08-26 | 2019-10-18 | 11 | 100d | 0d |  |  |
| 15 | 9.2 | Тестирование | 40d | 2019-10-21 | 2019-12-13 | 14 | 100d |  |  |  |
| 16 | 10 | **Линия баса** | 140d | 2019-04-08 | 2019-10-18 |  | 140d |  |  |  |
| 17 | 10.1 | Разработка анализа | 50d | 2019-04-08 | 2019-06-14 |  | 140d | 0d |  |  |
| 18 | 10.2 | Тестирование анализа | 30d | 2019-06-17 | 2019-07-26 | 17 | 200d |  |  |  |
| 19 | 10.3 | Разработка генерации | 40d | 2019-06-17 | 2019-08-09 | 17 | 140d | 0d |  |  |
| 20 | 10.4 | Тестирование генерации | 30d | 2019-08-12 | 2019-09-20 | 19 | 160d |  |  |  |
| 21 | 10.5 | Разработка коррекции | 30d | 2019-08-12 | 2019-09-20 | 19 | 140d | 0d |  |  |
| 22 | 10.6 | Тестирование коррекции | 20d | 2019-09-23 | 2019-10-18 | 21 | 140d |  |  |  |
| 23 | 11 | **Генерация гармонии** | 130d | 2019-04-08 | 2019-10-04 |  | 150d |  |  |  |
| 24 | 11.1 | Разработка | 80d | 2019-04-08 | 2019-07-26 |  | 150d | 0d |  |  |
| 25 | 11.2 | Тестирование | 50d | 2019-07-29 | 2019-10-04 | 24 | 150d |  |  |  |
